# FCMP++/Carrot Plan

Schedule from Planner, 2026-07-22 to 2027-03-04.
The Monero Project

## Calendars

- Default: Mon-Fri 08:00-12:00, 13:00-17:00; Sat-Sun off.

## Schedule

| ID | Task | Duration | Start | Finish | Predecessors | Constraint | Work |
| --- | --- | --- | --- | --- | --- | --- | --- |
| 1 | Circuit + Gadget Library Audit | 20d | 2026-07-29 | 2026-08-25 |  | start no earlier than 2026-07-29 | 160h |
| 2 | FCMP++ Phase 2 audit | 20d | 2026-07-29 | 2026-08-25 |  | start no earlier than 2026-07-29 | 160h |
| 3 | FCMP++ Phase 3 audit | 20d | 2026-08-26 | 2026-09-22 | 2 |  | 160h |
| 4 | FCMP++ further integretion audit? | 40d | 2026-08-26 | 2026-10-20 | 1 |  | 320h |
| 5 | FCMP++ Phase 1b merges | 4.75d | 2026-07-22 | 2026-07-28 |  |  | 38h |
| 6 | FCMP++ Phase 2 merges | 10d | 2026-07-28 | 2026-08-11 | 5 |  | 80h |
| 7 | FCMP++ Phase 3 merges | 5d | 2026-08-11 | 2026-08-18 | 6 |  | 40h |
| 8 | mx25519 merge | 5d | 2026-07-22 | 2026-07-28 |  |  | 40h |
| 9 | carrot_core merge | 5d | 2026-07-29 | 2026-08-04 | 8 |  | 40h |
| 10 | carrot_impl merge | 5d | 2026-08-05 | 2026-08-11 | 9 |  | 40h |
| 11 | carrot-fcmp integration merges | 5d | 2026-08-12 | 2026-08-18 | 10 |  | 40h |
| 12 | RandomX v2 + intermediate merge | 5d | 2026-07-22 | 2026-07-28 |  |  | 40h |
| 13 | TX relay v2 double-spend debug | 5d | 2026-07-22 | 2026-07-28 |  |  | 40h |
| 14 | TX relay v2 merge | 10d | 2026-07-29 | 2026-08-11 | 13 |  | 80h |
| 15 | HF activation merge | 1d | 2026-08-19 | 2026-08-19 | 14, 12, 11, 7 |  | 8h |
| 16 | Pre-release code freeze | 20d | 2026-08-20 | 2026-09-16 | 15 |  | 160h |
| 17 | First HF-enabled binary release | 5d | 2026-09-17 | 2026-09-23 | 16, 15 |  | 40h |
| 18 | HF mandatory waiting period | 120d | 2026-09-17 | 2027-03-03 | 16, 15 |  | 960h |
| 19 | Circuit + Gadget follow-up dev | 10d | 2026-08-26 | 2026-09-08 | 1 |  | 80h |
| 20 | FCMP++ integration follow-up dev | 10d | 2026-10-21 | 2026-11-03 | 3, 4, 19 |  | 80h |
| 21 | Follow-up fix binary release | 5d | 2026-11-04 | 2026-11-10 | 20 |  | 40h |
| 22 | Trezor HW dev | 90d | 2026-07-22 | 2026-11-24 |  |  | 720h |
| 23 | Trezor HW merges | 5d | 2026-11-25 | 2026-12-01 | 22 |  | 40h |
| 24 | Ledger HW dev | 90d | 2026-07-22 | 2026-11-24 |  |  | 720h |
| 25 | Ledger HW merges | 5d | 2026-11-25 | 2026-12-01 | 24 |  | 40h |
| 26 | Multisig dev | 45d | 2026-07-22 | 2026-09-22 |  |  | 360h |
| 27 | Multisig merges | 1d | 2026-09-23 | 2026-09-23 | 26 |  | 8h |
| 28 | Hot-cold dev | 5d | 2026-07-22 | 2026-07-28 |  |  | 40h |
| 29 | Hot-cold merges | 5d | 2026-07-29 | 2026-08-04 | 28 |  | 40h |
| 30 | Wallet knowledge dev | 5d | 2026-07-29 | 2026-08-04 | 28 |  | 40h |
| 31 | Wallet knowledge merges | 5d | 2026-08-05 | 2026-08-11 | 30 |  | 40h |
| 32 | Fully-featured merge | 1d | 2026-12-02 | 2026-12-02 | 20, 31, 29, 15, 27, 25, 23 |  | 8h |
| 33 | Fully-featured binary release | 5d | 2026-12-03 | 2026-12-09 | 32 |  | 40h |
| 34 | Pre-activation code freeze | 60d | 2026-12-03 | 2027-02-24 | 32 |  | 480h |
| 35 | FCMP++ activation | 1d | 2027-03-04 | 2027-03-04 | 34, 18 |  | 8h |
